# Planning_Prévisionnel

How a schedule from MS Project changed from version to version. A marks actual dates.

## Version 1 (saved 2023-10-06, file Previsionnal_planning.mpp)

| ID | WBS | Task | Duration | Start | Finish | Predecessors | Total float | Constraint |
| --- | --- | --- | --- | --- | --- | --- | --- | --- |
| 1 |  | Getting to know the project | 1d | 2023-09-25 | 2023-09-25 |  |  |  |
| 2 | 2 | **Study of the existing situation, tools and research (Documentation)** | 3d | 2023-09-26 | 2023-09-28 | 1 | 0d |  |
| 3 |  | Study of concepts in Dart | 1d | 2023-09-26 | 2023-09-26 |  |  |  |
| 4 |  | Study of concepts in Flutter | 2d | 2023-09-27 | 2023-09-28 |  |  |  |
| 5 |  | Study of concepts in Firebase | 1d | 2023-09-28 | 2023-09-28 |  | 1d | start no earlier than 2023-09-28 |
| 6 |  | Realization of the Project's Specifications | 1d | 2023-09-29 | 2023-09-29 |  |  |  |
| 7 | 4 | **Conception and Design** | 8d | 2023-10-02 | 2023-10-11 | 2 | 0d |  |
| 8 | 4.1 | **UML Diagrams Conception** | 2d | 2023-10-02 | 2023-10-03 |  | 0d |  |
| 9 |  | Use Case Diagram | 1d | 2023-10-02 | 2023-10-02 |  |  |  |
| 10 |  | Sequence Diagram | 1d | 2023-10-02 | 2023-10-02 |  |  |  |
| 11 |  | Class Diagram | 1d | 2023-10-03 | 2023-10-03 | 9, 10 |  |  |
| 12 |  | Choice of the App's design and workflow | 1d | 2023-10-04 | 2023-10-04 | 8 |  |  |
| 13 |  | Realization of the App's Interfaces Mockup | 5d | 2023-10-05 | 2023-10-11 | 12 |  |  |
| 14 | 5 | **Implementation** | 17d | 2023-10-12 | 2023-11-03 | 7 | 0d |  |
| 15 |  | Coding the different interfaces (Front-end) | 5d | 2023-10-12 | 2023-10-18 |  |  |  |
| 16 |  | Creating and Configuring of the database | 1d | 2023-10-19 | 2023-10-19 | 15 |  |  |
| 17 |  | Coding the App's Logic and back-end | 11d | 2023-10-20 | 2023-11-03 | 16 |  |  |
| 18 | 6 | **Testing** | 8d | 2023-11-06 | 2023-11-15 | 14 | 0d |  |
| 19 |  | Coding of the various unit tests | 4d | 2023-11-06 | 2023-11-09 |  |  |  |
| 20 |  | Realization of the App's functional test | 5d | 2023-11-09 | 2023-11-15 |  |  |  |
| 21 |  | Optimization and Improvement of the App | 5d | 2023-11-16 | 2023-11-22 | 18 |  |  |
| 22 |  | Deployment | 2d | 2023-11-23 | 2023-11-24 | 21 |  |  |
| 23 |  | App's Documentation (privacy policy, conditions of use, user manual) | 2d | 2023-11-27 | 2023-11-28 | 22 |  |  |

## Version 2 (data date 2024-01-18, saved 2024-01-10, file Real_planning.mpp)

Note of the change: real planning

Last finish 2023-11-28 → 2024-01-12 (+45d). Complete tasks 0 → 12.

Removed: 22 Deployment

Changed:

| ID | Task | Start | Finish | Duration | Complete | Total float | Predecessors | Other |
| --- | --- | --- | --- | --- | --- | --- | --- | --- |
| 1 | Getting to know the project | 2023-09-25 A | 2023-09-25 A |  | 0% → 100% |  |  | baseline start none → 2023-09-25; baseline finish none → 2023-09-25 |
| 2 | **Study of the existing situation, tools and research (Documentation)** | 2023-09-26 A | 2023-09-28 → 2023-10-02 A (+4d) | 3d → 5d | 0% → 100% | 0d → none |  | baseline start none → 2023-09-26; baseline finish none → 2023-09-28 |
| 3 | Study of concepts in Dart | 2023-09-26 A | 2023-09-26 A |  | 0% → 100% |  |  | baseline start none → 2023-09-26; baseline finish none → 2023-09-26 |
| 4 | Study of concepts in Flutter | 2023-09-27 A | 2023-09-28 A |  | 0% → 100% |  |  | baseline start none → 2023-09-27; baseline finish none → 2023-09-28 |
| 5 | Study of concepts in Firebase | 2023-09-28 A | 2023-09-28 → 2023-10-02 A (+4d) | 1d → 3d | 0% → 100% | 1d → none |  | baseline start none → 2023-09-28; baseline finish none → 2023-09-28 |
| 6 | Realization of the Project's Specifications | 2023-09-29 → 2023-10-02 A (+3d) | 2023-09-29 → 2023-10-03 A (+4d) | 1d → 2d | 0% → 100% |  | none → 2 | baseline start none → 2023-09-29; baseline finish none → 2023-09-29 |
| 7 | **Conception and Design** | 2023-10-02 → 2023-10-04 A (+2d) | 2023-10-11 → 2023-10-23 A (+12d) | 8d → 14d | 0% → 100% | 0d → none | 2 → 6 | baseline start none → 2023-10-02; baseline finish none → 2023-10-11 |
| 8 | **UML Diagrams Conception** | 2023-10-02 → 2023-10-04 A (+2d) | 2023-10-03 → 2023-10-06 A (+3d) | 2d → 3d | 0% → 100% | 0d → none | none → 6 | baseline start none → 2023-10-02; baseline finish none → 2023-10-03 |
| 9 | Use Case Diagram | 2023-10-02 → 2023-10-04 A (+2d) | 2023-10-02 → 2023-10-04 A (+2d) |  | 0% → 100% |  |  | baseline start none → 2023-10-02; baseline finish none → 2023-10-02 |
| 10 | Sequence Diagram | 2023-10-02 → 2023-10-04 A (+2d) | 2023-10-02 → 2023-10-04 A (+2d) |  | 0% → 100% |  |  | baseline start none → 2023-10-02; baseline finish none → 2023-10-02 |
| 11 | Class Diagram | 2023-10-03 → 2023-10-05 A (+2d) | 2023-10-03 → 2023-10-06 A (+3d) | 1d → 2d | 0% → 100% |  |  | baseline start none → 2023-10-03; baseline finish none → 2023-10-03 |
| 12 | Choice of the App's design and workflow | 2023-10-04 → 2023-10-06 A (+2d) | 2023-10-04 → 2023-10-10 A (+6d) | 1d → 3d | 0% → 100% |  |  | baseline start none → 2023-10-04; baseline finish none → 2023-10-04 |
| 13 | Realization of the App's Interfaces Mockup | 2023-10-05 → 2023-10-10 A (+5d) | 2023-10-11 → 2023-10-23 A (+12d) | 5d → 10d | 0% → 100% |  |  | baseline start none → 2023-10-05; baseline finish none → 2023-10-11 |
| 14 | **Implementation** | 2023-10-12 → 2023-10-24 A (+12d) | 2023-11-03 → 2023-12-19 (+46d) | 17d → 41d | 0% → 85% |  |  | baseline start none → 2023-10-12; baseline finish none → 2023-11-03 |
| 15 | Coding the different interfaces (Front-end) | 2023-10-12 → 2023-10-24 A (+12d) | 2023-10-18 → 2023-11-06 A (+19d) | 5d → 10d | 0% → 100% |  |  | baseline start none → 2023-10-12; baseline finish none → 2023-10-18 |
| 16 | Creating and Configuring of the database | 2023-10-19 → 2023-11-07 A (+19d) | 2023-10-19 → 2023-11-07 A (+19d) |  | 0% → 100% |  |  | baseline start none → 2023-10-19; baseline finish none → 2023-10-19 |
| 17 | Coding the App's Logic and back-end | 2023-10-20 → 2023-11-08 A (+19d) | 2023-11-03 → 2023-12-19 (+46d) | 11d → 30d | 0% → 80% |  |  | baseline start none → 2023-10-20; baseline finish none → 2023-11-03 |
| 18 | **Testing** | 2023-11-06 → 2023-12-19 A (+43d) | 2023-11-15 → 2023-12-26 (+41d) | 8d → 6d | 0% → 63% |  |  | baseline start none → 2023-11-06; baseline finish none → 2023-11-15 |
| 19 | Coding of the various unit tests | 2023-11-06 → 2023-12-19 A (+43d) | 2023-11-09 → 2023-12-19 (+40d) | 4d → 1d | 0% → 30% |  |  | baseline start none → 2023-11-06; baseline finish none → 2023-11-09 |
| 20 | Realization of the App's functional test | 2023-11-09 → 2023-12-20 A (+41d) | 2023-11-15 → 2023-12-26 (+41d) |  | 0% → 70% |  |  | baseline start none → 2023-11-09; baseline finish none → 2023-11-15 |
| 21 | Optimization and Improvement of the App | 2023-11-16 → 2023-12-27 A (+41d) | 2023-11-22 → 2024-01-10 (+49d) | 5d → 11d | 0% → 80% |  |  | baseline start none → 2023-11-16; baseline finish none → 2023-11-22 |
| 22 | App's Documentation (privacy policy, conditions of use, user manual) | 2023-11-27 → 2024-01-11 A (+45d) | 2023-11-28 → 2024-01-12 (+45d) |  | 0% → 60% |  | Deployment → none | baseline start none → 2023-11-27; baseline finish none → 2023-11-28 |
